# NCICBSecurityService

Schedule from MS Project, 2004-08-02 to 2005-03-07.
Home

## Calendars

- Standard: Mon-Fri 08:00-12:00, 13:00-17:00; Sat-Sun off.

## Resources

| Resource |
| --- |
| Vinay |
| Resource 1 |
| Brian |
| Kalpesh |
| Kunal |

## Schedule

| ID | WBS | Task | Duration | Start | Finish | Predecessors | Total slack | Free slack | Constraint | Resources | Work |
| --- | --- | --- | --- | --- | --- | --- | --- | --- | --- | --- | --- |
| 1 | 1 | **Security Module (Release One)** | 156d | 2004-08-02 | 2005-03-07 |  | 0d |  |  |  | 4568h |
| 2 | 1.1 | **Inception** | 38d | 2004-08-02 | 2004-09-22 |  | 118d |  |  |  | 512h |
| 3 | 1.1.1 | Phase I Evaluation | 7d | 2004-08-02 | 2004-08-10 |  | 149d |  | start no earlier than 2004-08-02 | Vinay; Brian | 112h |
| 4 | 1.1.2 | Interview NCICB Team Leads | 12d | 2004-08-09 | 2004-08-24 |  | 123d | 5d | start no earlier than 2004-08-09 | Vinay; Brian | 192h |
| 5 | 1.1.3 | Scope and Vision Document | 10d | 2004-08-30 | 2004-09-10 |  | 126d |  | start no earlier than 2004-08-30 | Brian | 80h |
| 6 | 1.1.4 | Supplentary Specifications | 3d | 2004-09-01 | 2004-09-03 | 4 | 118d | 0d | start no earlier than 2004-09-01 | Vinay | 24h |
| 7 | 1.1.5 | Fuctional Specifications | 5d | 2004-09-06 | 2004-09-10 | 6 | 118d | 0d |  | Vinay | 40h |
| 8 | 1.1.6 | Use Case Model | 5d | 2004-09-13 | 2004-09-17 | 7 | 118d | 0d |  | Vinay | 40h |
| 9 | 1.1.7 | Identify Risk List | 3d | 2004-09-20 | 2004-09-22 | 8 | 118d |  |  | Kalpesh | 24h |
| 10 | 1.2 | **Elaboration** | 22d | 2004-09-27 | 2004-10-26 |  | 94d |  |  |  | 280h |
| 11 | 1.2.1 | **Iteration I** | 13d | 2004-09-27 | 2004-10-13 |  | 103d |  |  |  | 152h |
| 12 | 1.2.1.1 | Level 1 - 2 Use Cases | 5d | 2004-09-27 | 2004-10-01 |  | 111d |  |  | Vinay | 40h |
| 13 | 1.2.1.2 | Risk List Priority | 3d | 2004-09-27 | 2004-09-29 |  | 113d |  |  | Vinay | 24h |
| 14 | 1.2.1.3 | Detailed Iteration Release Plan | 5d | 2004-09-27 | 2004-10-01 |  | 111d |  |  | Vinay; Brian | 80h |
| 15 | 1.2.1.4 | **Finalize Requirements** | 9d | 2004-10-01 | 2004-10-13 |  | 103d |  |  |  | 8h |
| 16 | 1.2.1.4.1 | Stakeholder Sign Off | 1d | 2004-10-01 | 2004-10-01 |  | 110d | 7d | start no earlier than 2004-10-01 |  |  |
| 17 | 1.2.1.4.2 | User Working Group Review | 1d | 2004-10-13 | 2004-10-13 | 16 | 103d |  | start no earlier than 2004-10-13 | Kalpesh | 8h |
| 18 | 1.2.2 | **Iteration II** | 16d | 2004-10-05 | 2004-10-26 |  | 94d |  |  |  | 128h |
| 19 | 1.2.2.1 | Software Architecture Document | 15d | 2004-10-05 | 2004-10-25 |  | 94d | 0d | start no earlier than 2004-10-05 | Vinay | 120h |
| 20 | 1.2.2.2 | Prioritize Risk List | 1d | 2004-10-26 | 2004-10-26 | 19 | 94d |  |  | Vinay | 8h |
| 21 | 1.3 | **Construction** | 72d | 2004-10-18 | 2005-01-25 |  | 29d |  |  |  | 3392h |
| 22 | 1.3.1 | **Iteration I** | 25d | 2004-10-26 | 2004-11-29 |  | 70d |  |  |  | 352h |
| 23 | 1.3.1.1 | Iteration Plan | 1d | 2004-10-26 | 2004-10-26 |  | 94d |  | start no earlier than 2004-10-26 | Vinay; Kunal | 16h |
| 24 | 1.3.1.2 | **Authentication** | 24d | 2004-10-27 | 2004-11-29 |  | 70d |  |  |  | 336h |
| 25 | 1.3.1.2.1 | **Design** | 4d | 2004-10-27 | 2004-11-01 |  | 76d |  |  |  | 56h |
| 26 | 1.3.1.2.1.1 | **Documentation** | 4d | 2004-10-27 | 2004-11-01 |  | 76d |  |  |  | 56h |
| 27 | 1.3.1.2.1.1.1 | Level 3 - 4 Use Cases | 1d | 2004-10-27 | 2004-10-27 |  | 93d |  | start no earlier than 2004-10-27 | Kunal | 8h |
| 28 | 1.3.1.2.1.1.2 | Use Case Model | 1d | 2004-10-27 | 2004-10-27 |  | 90d | 0d | start no earlier than 2004-10-27 | Kunal | 8h |
| 29 | 1.3.1.2.1.1.3 | Working Group Use Case Review | 1d | 2004-10-28 | 2004-10-28 | 28 | 90d | 0d |  | Kalpesh | 8h |
| 30 | 1.3.1.2.1.1.4 | UML Sequence Diagram | 1d | 2004-10-29 | 2004-10-29 | 29 | 90d | 0d |  | Kunal | 8h |
| 31 | 1.3.1.2.1.1.5 | UML Class Diagram | 1d | 2004-11-01 | 2004-11-01 | 30 | 90d |  |  | Vinay | 8h |
| 32 | 1.3.1.2.1.1.6 | UML Activity Diagram | 1d | 2004-10-29 | 2004-10-29 |  | 74d | 0d | start no earlier than 2004-10-29 | Vinay | 8h |
| 33 | 1.3.1.2.1.1.7 | Design Review | 1d | 2004-11-01 | 2004-11-01 | 32 | 74d | 4d |  | Brian | 8h |

| ID | WBS | Task | Duration | Start | Finish | Predecessors | Total slack | Free slack | Constraint | Resources | Work |
| --- | --- | --- | --- | --- | --- | --- | --- | --- | --- | --- | --- |
| 34 | 1.3.1.2.2 | **Implementation** | 16d | 2004-11-01 | 2004-11-22 |  | 75d |  |  |  | 240h |
| 35 | 1.3.1.2.2.1 | Data Model Enhancement | 5d | 2004-11-01 | 2004-11-05 |  | 86d |  | start no earlier than 2004-11-01 | Vinay; Kalpesh | 80h |
| 36 | 1.3.1.2.2.2 | **JAAS Authentication Modules** | 11d | 2004-11-08 | 2004-11-22 |  | 70d |  |  |  | 160h |
| 37 | 1.3.1.2.2.2.1 | LDAP | 5d | 2004-11-08 | 2004-11-12 | 33 | 70d | 0d | finish no earlier than 2004-11-12 | Vinay | 40h |
| 38 | 1.3.1.2.2.2.2 | RBDMS | 5d | 2004-11-08 | 2004-11-12 | 33 | 70d | 0d | finish no earlier than 2004-11-12 | Vinay | 40h |
| 39 | 1.3.1.2.2.2.3 | Junit Test Development | 4d | 2004-11-09 | 2004-11-12 |  | 70d | 0d | finish no earlier than 2004-11-12 | Kunal | 32h |
| 40 | 1.3.1.2.2.2.4 | Code Reviews | 6d | 2004-11-15 | 2004-11-22 | 37, 38, 39 | 70d | 0d | finish no earlier than 2004-11-15 | Brian | 48h |
| 41 | 1.3.1.2.3 | **Unit Testing** | 5d | 2004-11-23 | 2004-11-29 |  | 70d |  |  |  | 40h |
| 42 | 1.3.1.2.3.1 | Perform Testing | 1d | 2004-11-23 | 2004-11-23 | 40 | 70d | 0d | start no earlier than 2004-11-15 | Kunal | 8h |
| 43 | 1.3.1.2.3.2 | Evaluate Results | 2d | 2004-11-24 | 2004-11-25 | 42 | 70d | 0d | start no earlier than 2004-11-16 | Kunal | 16h |
| 44 | 1.3.1.2.3.3 | Integration Testing | 1d | 2004-11-26 | 2004-11-26 | 43 | 70d | 0d |  | Vinay | 8h |
| 45 | 1.3.1.2.3.4 | User Working Group Review | 1d | 2004-11-29 | 2004-11-29 | 44 | 70d |  |  | Kalpesh | 8h |
| 46 | 1.3.2 | **Iteration II** | 39d | 2004-11-30 | 2005-01-21 |  | 31d |  |  |  | 528h |
| 47 | 1.3.2.1 | Iteration Plan | 1d | 2004-11-30 | 2004-11-30 |  | 65d | 0d | start no earlier than 2004-11-30 | Vinay | 8h |
| 48 | 1.3.2.2 | **Authorization** | 38d | 2004-12-01 | 2005-01-21 |  | 31d |  |  |  | 520h |
| 49 | 1.3.2.2.1 | **Design** | 6d | 2004-12-01 | 2004-12-08 |  | 63d |  |  |  | 64h |
| 50 | 1.3.2.2.1.1 | **Documentation** | 6d | 2004-12-01 | 2004-12-08 |  | 63d |  |  |  | 64h |
| 51 | 1.3.2.2.1.1.1 | Level 3 - 4 Use Cases | 1d | 2004-12-01 | 2004-12-01 |  | 68d |  | start no earlier than 2004-12-01 | Vinay; Kunal | 16h |
| 52 | 1.3.2.2.1.1.2 | Use Case Model | 1d | 2004-12-01 | 2004-12-01 | 47 | 65d | 0d | start no earlier than 2004-11-22 | Kunal | 8h |
| 53 | 1.3.2.2.1.1.3 | User Working Group Review | 1d | 2004-12-02 | 2004-12-02 | 52 | 65d | 0d |  | Kalpesh | 8h |
| 54 | 1.3.2.2.1.1.4 | UML Sequence Diagram | 1d | 2004-12-03 | 2004-12-03 | 53 | 65d | 0d |  | Kunal | 8h |
| 55 | 1.3.2.2.1.1.5 | UML Class Diagram | 1d | 2004-12-06 | 2004-12-06 | 54 | 65d |  |  | Vinay | 8h |
| 56 | 1.3.2.2.1.1.6 | UML Activity Diagram | 1d | 2004-12-06 | 2004-12-06 |  | 64d | 0d | start no earlier than 2004-12-06 | Vinay | 8h |
| 57 | 1.3.2.2.1.1.7 | Design Review | 1d | 2004-12-07 | 2004-12-07 | 56 | 64d |  |  | Brian | 8h |
| 58 | 1.3.2.2.1.1.8 | UML Model for EVS | 2d | 2004-12-07 | 2004-12-08 |  | 63d |  | start no earlier than 2004-12-07 |  |  |

| ID | WBS | Task | Duration | Start | Finish | Predecessors | Total slack | Free slack | Constraint | Resources | Work |
| --- | --- | --- | --- | --- | --- | --- | --- | --- | --- | --- | --- |
| 59 | 1.3.2.2.2 | **Implementation** | 26d | 2004-12-09 | 2005-01-13 |  | 37d |  |  |  | 408h |
| 60 | 1.3.2.2.2.1 | Authorization XML Schema | 10d | 2004-12-09 | 2004-12-22 |  | 53d |  | start no earlier than 2004-12-09 | Vinay; Brian | 160h |
| 61 | 1.3.2.2.2.2 | **Authorization API** | 16d | 2004-12-23 | 2005-01-13 |  | 37d |  |  |  | 248h |
| 62 | 1.3.2.2.2.2.1 | Enhance Phase I Object Model | 15d | 2004-12-23 | 2005-01-12 |  | 37d | 0d | start no earlier than 2004-12-23 | Vinay; Kunal | 240h |
| 63 | 1.3.2.2.2.2.2 | Junit Test Development | 1d | 2005-01-13 | 2005-01-13 | 62 | 37d |  | finish no earlier than 2005-01-13 | Kunal | 8h |
| 64 | 1.3.2.2.3 | **Unit Testing** | 6d | 2005-01-14 | 2005-01-21 |  | 31d |  |  |  | 48h |
| 65 | 1.3.2.2.3.1 | Unit Testing | 2d | 2005-01-14 | 2005-01-17 |  | 31d | 0d | start no earlier than 2005-01-14 | Kunal | 16h |
| 66 | 1.3.2.2.3.2 | Evaluate Results | 2d | 2005-01-18 | 2005-01-19 | 65 | 31d | 0d |  | Vinay | 16h |
| 67 | 1.3.2.2.3.3 | Integration Testing | 1d | 2005-01-20 | 2005-01-20 | 66 | 31d | 0d |  | Vinay | 8h |
| 68 | 1.3.2.2.3.4 | User Working Group Review | 1d | 2005-01-21 | 2005-01-21 | 67 | 31d |  |  | Kalpesh | 8h |
| 69 | 1.3.3 | **Iteration III** | 26d | 2004-12-21 | 2005-01-25 |  | 29d |  |  |  | 288h |
| 70 | 1.3.3.1 | Iteration Plan | 1d | 2004-12-21 | 2004-12-21 |  | 34d | 0d | start no earlier than 2004-12-21 | Vinay | 8h |
| 71 | 1.3.3.2 | **Prototype (Reference Implementation)** | 25d | 2004-12-22 | 2005-01-25 |  | 29d |  |  |  | 280h |
| 72 | 1.3.3.2.1 | **Implementation** | 20d | 2004-12-22 | 2005-01-18 |  | 34d |  |  |  | 240h |
| 73 | 1.3.3.2.1.1 | **Demo Application** | 20d | 2004-12-22 | 2005-01-18 |  | 34d |  |  |  | 240h |
| 74 | 1.3.3.2.1.1.1 | Integrate Authentication | 5d | 2004-12-22 | 2004-12-28 | 70 | 34d | 0d | start no earlier than 2004-12-22 | Vinay | 40h |
| 75 | 1.3.3.2.1.1.2 | Integrate Authorization | 5d | 2004-12-29 | 2005-01-04 | 74 | 34d | 0d |  | Kunal | 40h |
| 76 | 1.3.3.2.1.1.3 | User Interface | 10d | 2005-01-05 | 2005-01-18 | 75 | 34d |  |  | Vinay; Kunal | 160h |
| 77 | 1.3.3.2.2 | **Documentation** | 5d | 2005-01-19 | 2005-01-25 |  | 29d |  |  |  | 40h |
| 78 | 1.3.3.2.2.1 | User Guide | 5d | 2005-01-19 | 2005-01-25 |  | 29d |  | start no earlier than 2005-01-19 | Vinay | 40h |
| 79 | 1.3.4 | **Iteration IV** | 65d | 2004-10-18 | 2005-01-14 |  | 36d |  |  | Brian | 2224h |
| 80 | 1.3.4.1 | Iteration Plan | 2d | 2004-10-18 | 2004-10-19 |  | 95d | 0d | start no earlier than 2004-10-18 | Brian | 16h |
| 81 | 1.3.4.2 | **User Provisioning** | 63d | 2004-10-20 | 2005-01-14 |  | 36d |  |  | Brian | 1688h |
| 82 | 1.3.4.2.1 | **Design** | 5d | 2004-10-20 | 2004-10-26 |  | 94d |  |  | Brian | 128h |
| 83 | 1.3.4.2.1.1 | **Documentation** | 5d | 2004-10-20 | 2004-10-26 |  | 94d |  |  | Brian | 88h |
| 84 | 1.3.4.2.1.1.1 | Level 3 - 4 Use Cases | 1d | 2004-10-20 | 2004-10-20 | 80 | 98d |  | start no earlier than 2004-10-20 | Brian | 8h |
| 85 | 1.3.4.2.1.1.2 | Use Case Model | 1d | 2004-10-20 | 2004-10-20 | 80 | 95d | 0d | start no earlier than 2004-10-20 | Brian | 8h |
| 86 | 1.3.4.2.1.1.3 | Use Case Working Group Review | 1d | 2004-10-21 | 2004-10-21 | 85 | 95d | 0d |  |  |  |
| 87 | 1.3.4.2.1.1.4 | UML Sequence Diagram | 1d | 2004-10-22 | 2004-10-22 | 86 | 95d | 0d |  | Brian | 8h |
| 88 | 1.3.4.2.1.1.5 | UML Class Diagram | 1d | 2004-10-25 | 2004-10-25 | 87 | 95d |  |  | Brian | 8h |
| 89 | 1.3.4.2.1.1.6 | UML Activity Diagram | 1d | 2004-10-25 | 2004-10-25 |  | 94d | 0d | start no earlier than 2004-10-25 | Brian | 8h |
| 90 | 1.3.4.2.1.1.7 | Design Review | 1d | 2004-10-26 | 2004-10-26 | 89 | 94d |  |  | Brian | 8h |

| ID | WBS | Task | Duration | Start | Finish | Predecessors | Total slack | Free slack | Constraint | Resources | Work |
| --- | --- | --- | --- | --- | --- | --- | --- | --- | --- | --- | --- |
| 91 | 1.3.4.2.2 | **Implementation** | 39d | 2004-10-25 | 2004-12-16 |  | 57d |  |  | Brian | 864h |
| 92 | 1.3.4.2.2.1 | Add Users | 5d | 2004-10-25 | 2004-10-29 |  | 57d | 0d | start no earlier than 2004-10-25 | Brian | 40h |
| 93 | 1.3.4.2.2.2 | Modify Users | 3d | 2004-11-01 | 2004-11-03 | 92 | 57d | 0d | start no earlier than 2004-11-01 | Brian | 24h |
| 94 | 1.3.4.2.2.3 | Create Roles | 5d | 2004-11-04 | 2004-11-10 | 93 | 57d | 0d |  | Brian | 40h |
| 95 | 1.3.4.2.2.4 | Assign Roles | 3d | 2004-11-11 | 2004-11-15 | 94 | 57d | 0d | start no earlier than 2004-11-11 | Brian | 24h |
| 96 | 1.3.4.2.2.5 | Assign Privileges | 3d | 2004-11-16 | 2004-11-18 | 95 | 57d | 0d |  | Brian | 24h |
| 97 | 1.3.4.2.2.6 | Create Protection Elements | 3d | 2004-11-19 | 2004-11-23 | 96 | 57d | 0d |  | Brian | 24h |
| 98 | 1.3.4.2.2.7 | Assign Protection Elements | 3d | 2004-11-24 | 2004-11-26 | 97 | 57d | 0d |  | Brian | 24h |
| 99 | 1.3.4.2.2.8 | Web Interface | 12d | 2004-11-29 | 2004-12-14 | 98 | 57d | 0d | start no earlier than 2004-11-25 | Brian | 96h |
| 100 | 1.3.4.2.2.9 | Validation | 2d | 2004-12-15 | 2004-12-16 | 99 | 57d |  |  | Brian | 16h |
| 101 | 1.3.4.2.2.10 | Code Reviews | 30d | 2004-11-05 | 2004-12-16 |  | 50d | 0d | finish no earlier than 2004-12-16 | Vinay | 240h |
| 102 | 1.3.4.2.3 | **Unit Testing** | 7d | 2004-12-17 | 2004-12-27 |  | 50d |  |  | Brian | 112h |
| 103 | 1.3.4.2.3.1 | Perform Testing | 3d | 2004-12-17 | 2004-12-21 | 101 | 50d | 0d | start no earlier than 2004-12-15 | Brian | 24h |
| 104 | 1.3.4.2.3.2 | Evaluate Results | 2d | 2004-12-22 | 2004-12-23 | 103 | 50d | 0d |  | Brian | 16h |
| 105 | 1.3.4.2.3.3 | Integration Testing | 1d | 2004-12-24 | 2004-12-24 | 104 | 50d | 0d |  | Brian | 8h |
| 106 | 1.3.4.2.3.4 | User Working Group Review | 1d | 2004-12-27 | 2004-12-27 | 105 | 50d |  |  | Brian | 8h |
| 107 | 1.3.4.2.4 | User Guide | 10d | 2005-01-03 | 2005-01-14 |  | 36d |  | start no earlier than 2005-01-03 | Brian | 80h |
| 108 | 1.4 | **Transition** | 41d | 2005-01-10 | 2005-03-07 |  | 0d |  |  |  | 384h |
| 109 | 1.4.1 | **Iteration I** | 27d | 2005-01-10 | 2005-02-15 |  | 14d |  |  |  | 296h |
| 110 | 1.4.1.1 | System Integration Document | 12d | 2005-01-10 | 2005-01-25 |  | 21d | 0d | start no earlier than 2005-01-10 | Vinay | 96h |
| 111 | 1.4.1.2 | caCore Technical Guide | 8d | 2005-01-26 | 2005-02-04 | 110 | 21d |  |  |  |  |
| 112 | 1.4.1.3 | **Integration Pilot (Release One)** | 25d | 2005-01-12 | 2005-02-15 |  | 14d |  |  |  | 200h |
| 113 | 1.4.1.3.1 | **Client Implementation** | 9d | 2005-01-12 | 2005-01-24 |  | 30d |  |  |  | 72h |
| 114 | 1.4.1.3.1.1 | Design | 2d | 2005-01-12 | 2005-01-13 |  | 30d | 0d | start no earlier than 2005-01-12 | Vinay | 16h |
| 115 | 1.4.1.3.1.2 | Development | 5d | 2005-01-14 | 2005-01-20 | 114 | 30d | 0d |  | Kunal | 40h |
| 116 | 1.4.1.3.1.3 | Testing | 2d | 2005-01-21 | 2005-01-24 | 115 | 30d |  |  | Kunal | 16h |
| 117 | 1.4.1.3.2 | Integration Testing | 10d | 2005-01-25 | 2005-02-07 |  | 14d | 0d | start no earlier than 2005-01-25 | Vinay | 80h |
| 118 | 1.4.1.3.3 | Evaluate Results | 1d | 2005-02-08 | 2005-02-08 | 117 | 14d | 0d |  | Vinay | 8h |
| 119 | 1.4.1.3.4 | Apply Needed Enhancements | 5d | 2005-02-09 | 2005-02-15 | 118 | 14d |  |  | Kunal | 40h |

| ID | WBS | Task | Duration | Start | Finish | Total slack | Constraint | Resources | Work |
| --- | --- | --- | --- | --- | --- | --- | --- | --- | --- |
| 120 | 1.4.2 | **Iteration II** | 10d | 2005-02-15 | 2005-02-28 | 5d |  |  | 88h |
| 121 | 1.4.2.1 | Staging | 5d | 2005-02-15 | 2005-02-21 | 10d | start no earlier than 2005-02-15 | Vinay | 40h |
| 122 | 1.4.2.2 | Testing | 6d | 2005-02-21 | 2005-02-28 | 5d | start no earlier than 2005-02-21 | Vinay | 48h |
| 123 | 1.4.3 | caCore Release 3 | 1d | 2005-03-07 | 2005-03-07 | 0d | start no earlier than 2005-03-07 |  |  |
